# LR1

Schedule from MS Project, 2024-03-01 to 2024-08-15, status date 2024-04-26, costs in ₽, A marks actual dates.
Команда разработчиков из 16 человек занимается созданием карты города на основе собственного модуля отображения. Проект должен быть завершен в течение 6 месяцев. Бюджет проекта: 50 000 рублей.

## Calendars

- Standard: Mon-Fri 08:00-12:00, 13:00-17:00; Sat-Sun off. Exceptions (off unless hours are given): 2024-03-07 09:00-12:00, 13:00-17:00 (7 марта - короткий день), 2024-03-08 (8 марта), 2024-04-27 09:00-12:00, 13:00-18:00 (27 апреля - рабочий день), 2024-04-29 to 2024-05-01 (1 мая), 2024-05-08 09:00-12:00, 13:00-17:00 (8 мая - короткий день), 2024-05-09 to 2024-05-10 (9 мая), 2024-06-11 09:00-12:00, 13:00-17:00 (11 июня - короткий день), 2024-06-12 (12 июня).

## Resources

| Resource | Group | Rate | Cost per use |
| --- | --- | --- | --- |
| Ведущий программист | Программирование | 10 | 100 |
| Программист 1 | Программирование | 7 | 50 |
| Программист 2 | Программирование | 7 | 50 |
| Программист 3 | Программирование | 7 | 50 |
| Системный аналитик | Анализ | 7 | 300 |
| Художник-дизайнер | Дизайн | 20 | 70 |
| Технический писатель | Документация | 8 | 20 |
| Web-дизайнер | Internet | 5 | 50 |
| 3D аниматор | Дизайн | 7 | 70 |
| Мультимедиа-корреспондент | М-медиа | 8 | 20 |
| Наборщик данных 1 | Ввод данных | 3 | 10 |
| Наборщик данных 2 | Ввод данных | 2 | 10 |
| Наборщик данных 3 | Ввод данных | 2 | 10 |
| Наборщик данных 4 | Ввод данных | 2 | 10 |
| Наборщик данных 5 | Ввод данных | 2 | 10 |
| Программист 4 | Программирование | 2 | 10 |
| Сервер |  | 2 |  |
| Наборщик данных 6 |  | 2 | 10 |
| Наборщик данных 7 |  | 2 | 10 |
| Наборщик данных 8 |  | 2 | 10 |
| Наборщик данных 9 |  | 2 | 10 |
| Наборщик данных 10 |  | 2 | 10 |
| Программист 1 (замена) |  | 7.35 | 50 |
| Системный аналитик (замена) |  | 8.4 | 300 |
| Художник-дизайнер 2 |  | 24 | 70 |
| Программист 5 | Программирование | 8.4 | 50 |
| Программист 6 | Программирование | 8.4 | 50 |
| Наборщик данных 11 |  | 2 | 10 |
| Наборщик данных 12 |  | 2 | 10 |
| Наборщик данных 13 |  | 2 | 10 |

## Schedule

| ID | WBS | Task | Type | Duration | Start | Finish | Predecessors | Complete | Remaining | Baseline start | Baseline finish | Baseline duration | Total slack | Free slack | Resources | Work | Actual work | Cost | Baseline cost | Actual cost |
| --- | --- | --- | --- | --- | --- | --- | --- | --- | --- | --- | --- | --- | --- | --- | --- | --- | --- | --- | --- | --- |
| 1 | 1 | Начало проекта | milestone | 0w | 2024-03-01 09:00 A | 2024-03-01 09:00 A |  | 100% |  | 2024-03-01 09:00 | 2024-03-01 09:00 | 0w |  |  |  |  |  |  |  |  |
| 2 | 2 | **Создание интерфейса** |  | 92.89d | 2024-03-01 09:00 A | 2024-07-18 11:08 | 1 | 86% | 13.21d | 2024-03-01 09:00 | 2024-06-28 08:33 | 78.57d | 0d |  |  | 560h | 320h | 6,571 | 6,550 | 4,870 |
| 3 | 2.1 | **Разработка дизайна интерфейса** |  | 35.75d | 2024-03-01 09:00 A | 2024-04-22 18:00 A |  | 100% |  | 2024-03-01 09:00 | 2024-04-08 16:00 | 25.62d |  |  |  | 320h | 320h | 4,010 | 4,010 | 4,010 |
| 4 | 2.1.1 | Разработка 2D графических элементов |  | 3w | 2024-03-01 09:00 A | 2024-03-25 14:00 A |  | 100% |  | 2024-03-01 09:00 | 2024-03-25 14:00 | 3w |  |  | Художник-дизайнер | 120h | 120h | 2,470 | 2,470 | 2,470 |
| 5 | 2.1.2 | Разработка 3D графических элементов |  | 2w | 2024-03-08 09:00 A | 2024-03-25 11:00 A | 4SS | 100% |  | 2024-03-01 09:00 | 2024-03-18 12:00 | 2w |  |  | 3D аниматор | 80h | 80h | 630 | 630 | 630 |
| 6 | 2.1.3 | Создание заставки |  | 4.05w | 2024-03-25 11:00 A | 2024-04-22 18:00 A | 5 | 100% |  | 2024-03-18 13:00 | 2024-04-08 16:00 | 3w |  |  | 3D аниматор | 120h | 120h | 910 | 910 | 910 |
| 7 | 2.2 | Программирование интерфейса |  | 1.5w | 2024-07-08 16:08 | 2024-07-18 11:08 | 3, 12 |  |  | 2024-06-18 13:33 | 2024-06-28 08:33 | 1.5w | 0d |  | Программист 3; Программист 4; Программист 2; Программист 1 (замена) | 240h |  | 1,561 | 1,540 |  |
| 8 | 3 | **Построение базы объектов** |  | 61.85d | 2024-03-25 14:00 A | 2024-06-26 14:47 |  | 41% | 36.42d | 2024-03-25 14:00 | 2024-06-18 09:00 | 55.25d | 35.82d |  | Сервер | 4952.79h | 716h | 13,239.73 | 12,210 | 3,194.2 |
| 9 | 3.1 | Анализ и построение структуры базы объектов |  | 2w | 2024-03-25 14:00 A | 2024-04-08 16:00 A |  | 100% |  | 2024-03-25 14:00 | 2024-04-08 16:00 | 2w |  |  | Системный аналитик | 80h | 80h | 916 | 860 | 916 |
| 10 | 3.2 | Программирование средств обработки базы объектов |  | 2.7w | 2024-04-08 16:00 A | 2024-05-14 13:47 | 9 | 89% | 0.3w | 2024-04-08 16:00 | 2024-04-27 17:00 | 3w | 35.82d | 0d | Программист 3; Программист 4; Программист 1 (замена); Программист 2 | 240h | 192h | 1,304.2 | 1,140 | 924 |
| 11 | 3.3 | Наполнение базы объектов |  | 6w | 2024-05-14 13:47 | 2024-06-26 14:47 | 10 |  |  | 2024-04-27 17:00 | 2024-06-18 09:00 | 6w | 35.82d |  | Наборщик данных 1; Наборщик данных 2; Наборщик данных 3; Наборщик данных 4; Наборщик данных 5; Наборщик данных 6; Наборщик данных 7; Наборщик данных 8; Наборщик данных 9; Наборщик данных 10 | 2400h |  | 5,140 | 5,140 |  |
| 12 | 4 | **Создание ядра GIS** |  | 85.39d | 2024-03-01 09:00 A | 2024-07-08 16:08 |  | 40% | 51.04d | 2024-03-01 09:00 | 2024-06-18 13:33 | 71.07d | 0d |  |  | 1880h | 372h | 15,854.52 | 14,817.56 | 4,104.65 |
| 13 | 4.1 | Анализ и проектирование ядра |  | 4.95w | 2024-03-01 09:00 A | 2024-04-22 16:00 A |  | 100% |  | 2024-03-01 09:00 | 2024-03-25 14:00 | 3w |  |  | Системный аналитик; Ведущий программист | 240h | 240h | 2,498.1 | 2,440 | 2,498.1 |
| 14 | 4.2 | Создание модели ядра |  | 2.47w | 2024-04-22 16:00 A | 2024-05-20 08:47 | 13 | 33% | 1.65w | 2024-03-25 14:00 | 2024-04-08 14:49 | 2.02w | 0d |  | Ведущий программист; Программист 2; Программист 3; Программист 4; Программист 1 (замена) | 400h | 132h | 2,920.1 | 2,892.52 | 1,206.55 |
| 15 | 4.3 | Тестирование модели ядра |  | 1w | 2024-05-20 08:47 | 2024-05-27 08:47 | 14 |  |  | 2024-04-08 14:49 | 2024-04-15 14:49 | 1w | 0d |  | Программист 1 (замена) | 40h |  | 344 | 330 |  |
| 16 | 4.4 | Создание рабочей версии ядра |  | 5.93w | 2024-05-27 08:47 | 2024-07-08 16:08 | 15 |  |  | 2024-04-15 14:49 | 2024-06-18 13:33 | 8.12w | 0d |  | Ведущий программист; Программист 2; Программист 3; Программист 4; Программист 1 (замена); Программист 5; Программист 6 | 1200h |  | 9,092.31 | 8,155.05 |  |
| 17 | 5 | Создание мультимедиа – наполнения |  | 6w | 2024-04-23 08:00 A | 2024-06-13 09:00 | 3 | 13% | 5.22w | 2024-04-08 16:00 | 2024-05-27 16:00 | 6w | 45.42d |  | Мультимедиа-корреспондент | 240h | 31h | 1,940 | 1,940 | 268 |
| 18 | 6 | Создание справочной системы |  | 2w | 2024-07-30 09:08 | 2024-08-13 16:08 | 7 |  |  | 2024-07-10 08:00 | 2024-07-24 12:00 | 2w | 1.65d |  | Технический писатель | 80h |  | 660 | 660 |  |
| 19 | 7 | **Создание руководства пользователя** |  | 23.12d | 2024-07-04 11:08 | 2024-08-06 13:08 | 7FS-10d |  |  | 2024-06-14 08:33 | 2024-07-09 15:33 | 17.75d | 0d |  |  | 160h |  | 1,850 | 1,850 |  |
| 20 | 7.1 | Разработка дизайна руководства |  | 1w | 2024-07-04 11:08 | 2024-07-25 15:08 |  |  |  | 2024-06-14 08:33 | 2024-07-05 10:33 | 1w | 0d |  | Художник-дизайнер | 40h |  | 870 | 870 |  |
| 21 | 7.2 | Написание руководства пользователя |  | 3w | 2024-07-08 11:08 | 2024-08-06 13:08 | 20SS+2d |  |  | 2024-06-18 08:33 | 2024-07-09 15:33 | 3w | 0d |  | Технический писатель | 120h |  | 980 | 980 |  |
| 22 | 8 | **Создание web – сайта и поддержка** |  | 24.38d | 2024-07-08 11:08 | 2024-08-09 15:08 |  |  |  | 2024-06-18 08:33 | 2024-07-19 16:33 | 23.88d | 0d |  |  | 248h |  | 2,210 | 2,210 |  |
| 23 | 8.1 | Разработка структуры сайта |  | 1d | 2024-07-08 11:08 | 2024-07-09 11:08 | 21SS |  |  | 2024-06-18 08:33 | 2024-06-19 08:33 | 1d | 0d |  | Web-дизайнер | 8h |  | 90 | 90 |  |
| 24 | 8.2 | Разработка дизайна сайта |  | 1.35w | 2024-07-09 11:08 | 2024-07-18 14:08 | 23 |  |  | 2024-06-19 08:33 | 2024-06-28 09:33 | 1.38w | 0d |  | Web-дизайнер; Художник-дизайнер; 3D аниматор | 120h |  | 1,470 | 1,470 |  |
| 25 | 8.3 | Наполнение сайта |  | 3w | 2024-07-18 14:08 | 2024-08-09 15:08 | 24 |  |  | 2024-06-28 09:33 | 2024-07-19 16:33 | 3w | 0d |  | Web-дизайнер | 120h |  | 650 | 650 |  |
| 26 | 9 | Тестирование сайта |  | 1.75w | 2024-08-02 15:08 | 2024-08-15 13:20 | 22FS-1w |  |  | 2024-07-12 16:33 | 2024-08-12 15:33 | 4.17w | 0d |  | Ведущий программист; Программист 2; Программист 1 (замена); Программист 3; Программист 4; Программист 5; Программист 6 | 480h |  | 3,789.73 | 4,040 |  |
| 27 | 10 | Сдача сайта в эксплуатацию | milestone | 0w | 2024-08-15 13:20 | 2024-08-15 13:20 | 26 |  |  | 2024-08-12 15:33 | 2024-08-12 15:33 | 0w | 0d |  |  |  |  |  |  |  |

| ID | WBS | Task | Type | Duration | Start | Finish | Complete | Remaining | Baseline start | Baseline finish | Baseline duration | Constraint | Resources | Work | Actual work | Cost | Baseline cost | Actual cost |
| --- | --- | --- | --- | --- | --- | --- | --- | --- | --- | --- | --- | --- | --- | --- | --- | --- | --- | --- |
| 28 | 11 | **Совещание** |  | 104.62d | 2024-03-06 09:00 A | 2024-08-07 18:00 | 35% | 68.23d | 2024-03-06 09:00 | 2024-09-18 10:00 | 133.75d? |  |  | 159h | 54h | 1,481 | 1,495 | 506 |
| 29 | 11.1 | Совещание 1 | manual | 1h | 2024-03-06 09:00 A | 2024-03-06 10:00 A | 100% |  | 2024-03-06 09:00 | 2024-03-06 10:00 | 1h | start no earlier than 2024-03-06 09:00 | 3D аниматор; Web-дизайнер; Ведущий программист; Мультимедиа-корреспондент; Художник-дизайнер; Технический писатель; Системный аналитик | 7h | 7h | 65 | 65 | 65 |
| 30 | 11.2 | Совещание 2 | manual | 1h | 2024-03-13 09:00 A | 2024-03-13 10:00 A | 100% |  | 2024-03-13 09:00 | 2024-03-13 10:00 | 1h | start no earlier than 2024-03-13 09:00 | 3D аниматор; Web-дизайнер; Ведущий программист; Мультимедиа-корреспондент; Художник-дизайнер; Технический писатель | 6h | 6h | 58 | 65 | 58 |
| 31 | 11.3 | Совещание 3 | manual | 1h | 2024-03-20 09:00 A | 2024-03-20 10:00 A | 100% |  | 2024-03-20 09:00 | 2024-03-20 10:00 | 1h | start no earlier than 2024-03-20 09:00 | 3D аниматор; Web-дизайнер; Ведущий программист; Мультимедиа-корреспондент; Художник-дизайнер; Технический писатель | 6h | 6h | 58 | 65 | 58 |
| 32 | 11.4 | Совещание 4 | manual | 1h | 2024-03-27 09:00 A | 2024-03-27 10:00 A | 100% |  | 2024-03-27 09:00 | 2024-03-27 10:00 | 1h | start no earlier than 2024-03-27 09:00 | 3D аниматор; Web-дизайнер; Ведущий программист; Мультимедиа-корреспондент; Художник-дизайнер; Технический писатель; Системный аналитик | 7h | 7h | 65 | 65 | 65 |
| 33 | 11.5 | Совещание 5 | manual | 1h | 2024-04-03 09:00 A | 2024-04-03 10:00 A | 100% |  | 2024-04-03 09:00 | 2024-04-03 10:00 | 1h | start no earlier than 2024-04-03 09:00 | 3D аниматор; Web-дизайнер; Ведущий программист; Мультимедиа-корреспондент; Художник-дизайнер; Технический писатель; Системный аналитик | 7h | 7h | 65 | 65 | 65 |
| 34 | 11.6 | Совещание 6 | manual | 1h | 2024-04-10 09:00 A | 2024-04-10 10:00 A | 100% |  | 2024-04-10 09:00 | 2024-04-10 10:00 | 1h | start no earlier than 2024-04-10 09:00 | 3D аниматор; Web-дизайнер; Ведущий программист; Мультимедиа-корреспондент; Художник-дизайнер; Технический писатель; Системный аналитик | 7h | 7h | 65 | 65 | 65 |
| 35 | 11.7 | Совещание 7 | manual | 1h | 2024-04-17 09:00 A | 2024-04-17 10:00 A | 100% |  | 2024-04-17 09:00 | 2024-04-17 10:00 | 1h | start no earlier than 2024-04-17 09:00 | 3D аниматор; Web-дизайнер; Ведущий программист; Мультимедиа-корреспондент; Художник-дизайнер; Технический писатель; Системный аналитик | 7h | 7h | 65 | 65 | 65 |
| 36 | 11.8 | Совещание 8 | manual | 1h | 2024-04-24 09:00 A | 2024-04-24 10:00 A | 100% |  | 2024-04-24 09:00 | 2024-04-24 10:00 | 1h | start no earlier than 2024-04-24 09:00 | 3D аниматор; Web-дизайнер; Ведущий программист; Мультимедиа-корреспондент; Художник-дизайнер; Технический писатель; Системный аналитик | 7h | 7h | 65 | 65 | 65 |
| 37 | 11.9 | Совещание 9 | manual | 1h | 2024-05-02 08:00 | 2024-05-02 09:00 |  |  | 2024-05-02 08:00 | 2024-05-02 09:00 | 1h | start no earlier than 2024-05-01 09:00 | 3D аниматор; Web-дизайнер; Ведущий программист; Мультимедиа-корреспондент; Художник-дизайнер; Технический писатель; Системный аналитик | 7h |  | 65 | 65 |  |
| 38 | 11.10 | Совещание 10 | manual | 1h | 2024-05-08 09:00 | 2024-05-08 10:00 |  |  | 2024-05-08 09:00 | 2024-05-08 10:00 | 1h | start no earlier than 2024-05-08 09:00 | 3D аниматор; Web-дизайнер; Ведущий программист; Мультимедиа-корреспондент; Художник-дизайнер; Технический писатель; Системный аналитик | 7h |  | 65 | 65 |  |
| 39 | 11.11 | Совещание 11 | manual | 1h | 2024-05-15 09:00 | 2024-05-15 10:00 |  |  | 2024-05-15 09:00 | 2024-05-15 10:00 | 1h | start no earlier than 2024-05-15 09:00 | 3D аниматор; Web-дизайнер; Ведущий программист; Мультимедиа-корреспондент; Художник-дизайнер; Технический писатель; Системный аналитик | 7h |  | 65 | 65 |  |
| 40 | 11.12 | Совещание 12 | manual | 1h | 2024-05-22 09:00 | 2024-05-22 10:00 |  |  | 2024-05-22 09:00 | 2024-05-22 10:00 | 1h | start no earlier than 2024-05-22 09:00 | 3D аниматор; Web-дизайнер; Ведущий программист; Мультимедиа-корреспондент; Художник-дизайнер; Технический писатель; Системный аналитик | 7h |  | 65 | 65 |  |
| 41 | 11.13 | Совещание 13 | manual | 1h | 2024-05-29 09:00 | 2024-05-29 10:00 |  |  | 2024-05-29 09:00 | 2024-05-29 10:00 | 1h | start no earlier than 2024-05-29 09:00 | 3D аниматор; Web-дизайнер; Ведущий программист; Мультимедиа-корреспондент; Художник-дизайнер; Технический писатель; Системный аналитик | 7h |  | 65 | 65 |  |
| 42 | 11.14 | Совещание 14 | manual | 1h | 2024-06-05 09:00 | 2024-06-05 10:00 |  |  | 2024-06-05 09:00 | 2024-06-05 10:00 | 1h | start no earlier than 2024-06-05 09:00 | 3D аниматор; Web-дизайнер; Ведущий программист; Мультимедиа-корреспондент; Художник-дизайнер; Технический писатель; Системный аналитик | 7h |  | 65 | 65 |  |
| 43 | 11.15 | Совещание 15 | manual | 1h | 2024-06-13 08:00 | 2024-06-13 09:00 |  |  | 2024-06-13 08:00 | 2024-06-13 09:00 | 1h | start no earlier than 2024-06-12 09:00 | 3D аниматор; Web-дизайнер; Ведущий программист; Мультимедиа-корреспондент; Художник-дизайнер; Технический писатель; Системный аналитик | 7h |  | 65 | 65 |  |
| 44 | 11.16 | Совещание 16 | manual | 1h | 2024-06-19 09:00 | 2024-06-19 10:00 |  |  | 2024-06-19 09:00 | 2024-06-19 10:00 | 1h | start no earlier than 2024-06-19 09:00 | 3D аниматор; Web-дизайнер; Ведущий программист; Мультимедиа-корреспондент; Художник-дизайнер; Технический писатель; Системный аналитик | 7h |  | 65 | 65 |  |
| 45 | 11.17 | Совещание 17 | manual | 1h | 2024-06-26 09:00 | 2024-06-26 10:00 |  |  | 2024-06-26 09:00 | 2024-06-26 10:00 | 1h | start no earlier than 2024-06-26 09:00 | 3D аниматор; Web-дизайнер; Ведущий программист; Мультимедиа-корреспондент; Художник-дизайнер; Технический писатель; Системный аналитик | 7h |  | 65 | 65 |  |
| 46 | 11.18 | Совещание 18 | manual | 1h | 2024-07-03 09:00 | 2024-07-03 10:00 |  |  | 2024-07-03 09:00 | 2024-07-03 10:00 | 1h | start no earlier than 2024-07-03 09:00 | 3D аниматор; Web-дизайнер; Ведущий программист; Мультимедиа-корреспондент; Художник-дизайнер; Технический писатель; Системный аналитик | 7h |  | 65 | 65 |  |
| 47 | 11.19 | Совещание 19 | manual | 1h | 2024-07-10 09:00 | 2024-07-10 10:00 |  |  | 2024-07-10 09:00 | 2024-07-10 10:00 | 1h | start no earlier than 2024-07-10 09:00 | 3D аниматор; Web-дизайнер; Ведущий программист; Мультимедиа-корреспондент; Художник-дизайнер; Технический писатель; Системный аналитик | 7h |  | 65 | 65 |  |
| 48 | 11.20 | Совещание 20 | manual | 1h | 2024-07-17 09:00 | 2024-07-17 10:00 |  |  | 2024-07-17 09:00 | 2024-07-17 10:00 | 1h | start no earlier than 2024-07-17 09:00 | 3D аниматор; Web-дизайнер; Ведущий программист; Мультимедиа-корреспондент; Художник-дизайнер; Технический писатель; Системный аналитик | 7h |  | 65 | 65 |  |
| 49 | 11.21 | Совещание 21 | manual | 1h | 2024-07-24 09:00 | 2024-07-24 10:00 |  |  | 2024-07-24 09:00 | 2024-07-24 10:00 | 1h | start no earlier than 2024-07-24 09:00 | 3D аниматор; Web-дизайнер; Ведущий программист; Мультимедиа-корреспондент; Художник-дизайнер; Технический писатель; Системный аналитик | 7h |  | 65 | 65 |  |
| 50 | 11.22 | Совещание 22 | manual | 1h | 2024-07-31 09:00 | 2024-07-31 10:00 |  |  | 2024-07-31 09:00 | 2024-07-31 10:00 | 1h | start no earlier than 2024-07-31 09:00 | 3D аниматор; Web-дизайнер; Ведущий программист; Мультимедиа-корреспондент; Художник-дизайнер; Технический писатель; Системный аналитик | 7h |  | 65 | 65 |  |
| 51 | 11.23 | Совещание 23 | manual | 1h | 2024-08-07 09:00 | 2024-08-07 10:00 |  |  | 2024-08-07 09:00 | 2024-08-07 10:00 | 1h | start no earlier than 2024-08-07 09:00 | 3D аниматор; Web-дизайнер; Ведущий программист; Мультимедиа-корреспондент; Художник-дизайнер; Технический писатель; Системный аналитик | 7h |  | 65 | 65 |  |
