# LR1

Schedule from MS Project, 2024-03-01 to 2024-07-22, costs in ₽.
Команда разработчиков из 16 человек занимается созданием карты города на основе собственного модуля отображения. Проект должен быть завершен в течение 6 месяцев. Бюджет проекта: 50 000 рублей.

## Calendars

- Standard: Mon-Fri 08:00-12:00, 13:00-17:00; Sat-Sun off. Exceptions (off unless hours are given): 2024-03-07 09:00-12:00, 13:00-17:00 (7 марта - короткий день), 2024-03-08 (8 марта), 2024-04-27 09:00-12:00, 13:00-18:00 (27 апреля - рабочий день), 2024-04-29 to 2024-05-01 (1 мая), 2024-05-08 09:00-12:00, 13:00-17:00 (8 мая - короткий день), 2024-05-09 to 2024-05-10 (9 мая), 2024-06-11 09:00-12:00, 13:00-17:00 (11 июня - короткий день), 2024-06-12 (12 июня).

## Resources

| Resource | Group | Rate | Cost per use |
| --- | --- | --- | --- |
| Ведущий программист | Программирование | 10 | 100 |
| Программист 1 | Программирование | 7 | 50 |
| Программист 2 | Программирование | 7 | 50 |
| Программист 3 | Программирование | 7 | 50 |
| Системный аналитик | Анализ | 7 | 300 |
| Художник-дизайнер | Дизайн | 20 | 70 |
| Технический писатель | Документация | 8 | 20 |
| Web-дизайнер | Internet | 5 | 50 |
| 3D аниматор | Дизайн | 7 | 70 |
| Мультимедиа-корреспондент | М-медиа | 8 | 20 |
| Наборщик данных 1 | Ввод данных | 3 | 10 |
| Наборщик данных 2 | Ввод данных | 2 | 10 |
| Наборщик данных 3 | Ввод данных | 2 | 10 |
| Наборщик данных 4 | Ввод данных | 2 | 10 |
| Наборщик данных 5 | Ввод данных | 2 | 10 |
| Программист 4 | Программирование | 2 | 10 |
| 1000 |  |  |  |
| Затр |  |  |  |
| Сервер |  | 2 |  |

## Schedule

| ID | WBS | Task | Type | Duration | Start | Finish | Predecessors | Baseline start | Baseline finish | Baseline duration | Total slack | Free slack | Resources | Work | Cost | Baseline cost |
| --- | --- | --- | --- | --- | --- | --- | --- | --- | --- | --- | --- | --- | --- | --- | --- | --- |
| 1 | 1 | Начало проекта | milestone | 0w | 2024-03-01 | 2024-03-01 |  | 2024-03-01 | 2024-03-01 | 0w | 0d |  |  |  |  |  |
| 2 | 2 | **Анализ и проектирование** |  | 25d | 2024-03-01 | 2024-04-08 | 1 |  |  |  | 0d |  |  | 664h | 5,062 |  |
| 3 | 2.1 | **Построение базы объектов** |  | 10d | 2024-03-25 | 2024-04-08 |  | 2024-03-01 | 2024-07-08 | 85d | 25d |  | Сервер | 416h | 2,532 | 14,528 |
| 4 | 2.1.1 | Анализ и построение структуры базы объектов |  | 2w | 2024-03-25 | 2024-04-08 |  | 2024-03-01 | 2024-03-18 | 2w | 25d | 0d | Системный аналитик | 80h | 860 | 860 |
| 5 | 2.2 | Анализ и проектирование ядра |  | 3w | 2024-03-01 | 2024-03-25 |  | 2024-03-01 | 2024-03-25 | 3w | 0d |  | Системный аналитик; Ведущий программист | 240h | 2,440 | 2,440 |
| 6 | 2.3 | Разработка структуры сайта |  | 1d | 2024-03-01 | 2024-03-04 |  | 2024-07-31 | 2024-08-01 | 1d | 59d | 0d | Web-дизайнер | 8h | 90 | 90 |
| 7 | 3 | **Разработка дизайна** |  | 55d | 2024-03-01 | 2024-05-24 |  | 2024-03-01 | 2024-08-12 | 110d | 40d |  |  | 680h | 8,420 | 6,150 |
| 8 | 3.1 | Разработка дизайна сайта |  | 1w | 2024-03-04 | 2024-03-12 | 6 | 2024-08-01 | 2024-08-08 | 1w | 59d |  | Web-дизайнер; Художник-дизайнер; 3D аниматор | 120h | 1,470 | 1,470 |
| 9 | 3.2 | **Разработка дизайна интерфейса** |  | 25d | 2024-03-01 | 2024-04-08 |  | 2024-03-01 | 2024-04-08 | 25d | 40d | 0d |  | 320h | 4,010 | 4,010 |
| 10 | 3.2.1 | Разработка 2D графических элементов |  | 3w | 2024-03-01 | 2024-03-25 |  | 2024-03-01 | 2024-03-25 | 3w | 40d | 0d | Художник-дизайнер | 120h | 2,470 | 2,470 |
| 11 | 3.2.2 | Разработка 3D графических элементов |  | 2w | 2024-03-01 | 2024-03-18 | 10SS | 2024-03-01 | 2024-03-18 | 2w | 40d | 0d | 3D аниматор | 80h | 630 | 630 |
| 12 | 3.2.3 | Создание заставки |  | 3w | 2024-03-18 | 2024-04-08 | 11 | 2024-03-18 | 2024-04-08 | 3w | 40d |  | 3D аниматор | 120h | 910 | 910 |
| 13 | 3.3 | Создание мультимедиа – наполнения |  | 6w | 2024-04-08 | 2024-05-24 | 9 | 2024-04-08 | 2024-05-24 | 6w | 40d |  | Мультимедиа-корреспондент | 240h | 1,940 | 1,940 |
| 14 | 4 | **Разработка** |  | 65d | 2024-03-25 | 2024-07-01 |  |  |  |  | 0d |  |  | 2840h | 23,370 |  |
| 15 | 4.1 | **Программирование** |  | 65d | 2024-03-25 | 2024-07-01 |  |  |  |  | 0d |  |  | 1520h | 19,030 |  |
| 16 | 4.1.1 | **Построение базы объектов** |  | 15d | 2024-04-08 | 2024-04-27 |  |  |  |  | 25d |  |  | 240h | 1,140 |  |
| 17 | 4.1.1.1 | Программирование средств обработки базы объектов |  | 3w | 2024-04-08 | 2024-04-27 | 4 | 2024-03-18 | 2024-04-08 | 3w | 25d | 0d | Программист 3; Программист 4 | 240h | 1,140 | 1,140 |
| 18 | 4.1.2 | Создание модели ядра |  | 2w | 2024-03-25 | 2024-04-08 | 5 | 2024-03-25 | 2024-04-27 | 5w | 0d |  | Ведущий программист; Программист 1 | 160h | 6,950 | 3,550 |
| 19 | 4.1.3 | Создание рабочей версии ядра |  | 8w | 2024-04-15 | 2024-06-17 | 26, 18 | 2024-05-08 | 2024-07-22 | 10w | 0d |  | Ведущий программист; Программист 1; Программист 2 | 960h | 9,800 | 9,800 |
| 20 | 4.1.4 | Программирование интерфейса |  | 2w | 2024-06-17 | 2024-07-01 | 9, 19 | 2024-07-22 | 2024-08-12 | 3w | 5d | 0d | Программист 3; Программист 4 | 160h | 1,140 | 1,140 |
| 21 | 4.2 | **Наполнение** |  | 40d | 2024-04-27 | 2024-07-01 |  | 2024-03-01 | 2024-07-22 | 95d | 15d |  |  | 1320h | 4,340 | 17,120 |
| 22 | 4.2.1 | **Построение базы объектов** |  | 30d | 2024-04-27 | 2024-06-17 |  |  |  |  | 25d |  |  | 1200h | 2,690 |  |
| 23 | 4.2.1.1 | Наполнение базы объектов |  | 6w | 2024-04-27 | 2024-06-17 | 17 | 2024-04-08 | 2024-07-08 | 12w | 25d | 40d | Наборщик данных 1; Наборщик данных 2; Наборщик данных 3; Наборщик данных 4; Наборщик данных 5 | 1200h | 2,690 | 5,330 |
| 24 | 4.2.2 | Наполнение сайта |  | 3w | 2024-06-07 | 2024-07-01 | 8, 19FS-1w | 2024-08-08 | 2024-08-29 | 3w | 0d |  | Web-дизайнер | 120h | 650 | 650 |

| ID | WBS | Task | Type | Duration | Start | Finish | Predecessors | Baseline start | Baseline finish | Baseline duration | Total slack | Free slack | Resources | Work | Cost | Baseline cost |
| --- | --- | --- | --- | --- | --- | --- | --- | --- | --- | --- | --- | --- | --- | --- | --- | --- |
| 25 | 5 | **Тестирование** |  | 70d | 2024-04-08 | 2024-07-22 |  |  |  |  | 0d |  |  | 520h | 4,370 |  |
| 26 | 5.1 | Тестирование модели ядра |  | 1w | 2024-04-08 | 2024-04-15 | 18 | 2024-04-27 | 2024-05-08 | 1w | 0d |  | Программист 1 | 40h | 330 | 330 |
| 27 | 5.2 | Тестирование сайта |  | 4w | 2024-06-24 | 2024-07-22 | 24FS-1w | 2024-08-22 | 2024-09-19 | 4w | 0d |  | Ведущий программист; Программист 1; Программист 2 | 480h | 4,040 | 4,040 |
| 28 | 6 | **Документирование** |  | 20d | 2024-06-17 | 2024-07-15 |  | 2024-07-29 | 2024-08-21 | 17d | 5d |  |  | 320h | 4,110 | 1,850 |
| 29 | 6.1 | **Создание руководства пользователя** |  | 17d | 2024-06-17 | 2024-07-10 | 20FS-10d |  |  |  | 8d |  |  | 240h | 3,450 |  |
| 30 | 6.1.1 | Разработка дизайна руководства |  | 3w | 2024-06-17 | 2024-07-08 |  | 2024-07-29 | 2024-08-05 | 1w | 8d | 0d | Художник-дизайнер | 120h | 2,470 | 870 |
| 31 | 6.1.2 | Написание руководства пользователя |  | 3w | 2024-06-19 | 2024-07-10 | 30SS+2d | 2024-07-31 | 2024-08-21 | 3w | 8d |  | Технический писатель | 120h | 980 | 980 |
| 32 | 6.2 | Создание справочной системы |  | 2w | 2024-07-01 | 2024-07-15 | 20 | 2024-08-12 | 2024-08-26 | 2w | 5d |  | Технический писатель | 80h | 660 | 660 |
| 33 | 7 | Сдача сайта в эксплуатацию | milestone | 0w | 2024-07-22 | 2024-07-22 | 27, 28 | 2024-09-19 | 2024-09-19 | 0w | 0d |  |  |  |  |  |
